Schedule from Planner, 2009-09-25 to 2009-12-27.
Phase: Development

## Calendars

- Default: Mon-Sun 08:00-12:00, 13:00-17:00. Exceptions (off unless hours are given): 2009-09-26 to 2009-09-27 08:00-12:00, 13:00-17:00.

## Resources

| Resource |
| --- |
| Estêvão Samuel Procópio |
| Taras Halturin |

## Schedule

| ID | WBS | Task | Type | Duration | Start | Finish | Predecessors | Complete | Constraint | Resources | Work |
| --- | --- | --- | --- | --- | --- | --- | --- | --- | --- | --- | --- |
| 1 | 1 | Tunnel plugin |  |  | 2009-09-25 | 2009-10-23 |  | 60% |  | Taras Halturin | 225.5h |
| 2 | 2 | **Bug fixing (0.2.2)** |  |  | 2009-09-25 | 2009-10-17 |  | 75% |  |  | 184h |
| 3 | 2.1 | Issue 21 |  |  | 2009-09-25 | 2009-10-04 |  | 100% |  | Estêvão Samuel Procópio | 72.5h |
| 4 | 2.2 | Issue 23 |  |  | 2009-10-04 | 2009-10-09 | 3 | 75% |  | Taras Halturin | 47.5h |
| 5 | 2.3 | Issue 25 |  |  | 2009-10-10 | 2009-10-17 | 4 | 75% |  | Taras Halturin | 64h |
| 6 | 3 | **PosgreSQL engine** |  |  | 2009-09-25 | 2009-10-20 |  |  |  | Estêvão Samuel Procópio | 212.25h |
| 7 | 3.1 | Navigation |  |  | 2009-09-25 | 2009-10-07 |  | 90% |  |  | 100.25h |
| 8 | 3.2 | SQL execution/fetching/stopping |  |  | 2009-10-07 | 2009-10-20 | 7 | 100% |  |  | 104h |
| 9 | 3.3 | Edit SQL for Views |  |  | 2009-09-25 | 2009-09-25 |  | 100% |  |  | 8h |
| 10 | 4 | Testing phase |  |  | 2009-10-23 | 2009-10-29 | 5, 1, 6FS+72h |  |  | Estêvão Samuel Procópio [50%]; Taras Halturin [50%] | 49.5h |
| 11 | 5 | Release 0.2.2 | milestone | 0d | 2009-10-30 | 2009-10-30 |  |  | must start on 2009-10-30 | Estêvão Samuel Procópio; Taras Halturin |  |
| 12 | 6 | **GSQLNavTree** |  |  | 2009-11-02 | 2009-11-07 | 11FS+72h |  |  |  | 48h |
| 13 | 6.1 | *_property_get |  |  | 2009-11-02 | 2009-11-07 |  |  |  | Taras Halturin | 48h |
| 14 | 7 | Bug fixing (0.2.5) |  |  | 2009-09-25 | 2009-09-29 |  |  |  |  | 40h |
| 15 | 8 | **GSQLNavHelper** |  |  | 2009-11-08 | 2009-11-15 |  |  | must start on 2009-11-06 | Taras Halturin | 59h |
| 16 | 8.1 | GSQLNavTree python bind |  |  | 2009-11-08 | 2009-11-15 | 12 |  |  |  | 59h |
| 17 | 9 | Release 0.2.5 | milestone | 0d | 2009-12-27 | 2009-12-27 |  |  | must start on 2009-12-27 | Estêvão Samuel Procópio; Taras Halturin |  |
